# ECG Time Series Analysis and Static Web Demo

Schedule from MS Project XML, 2026-10-01 to 2026-12-09, costs in ₫.

## Calendars

- Standard: Mon-Fri 08:00-12:00, 13:00-17:00; Sat-Sun off.

## Resources

| Resource | Rate | Notes |
| --- | --- | --- |
| Nguyễn Tuấn Anh | 600000 | Project manager; integration and report; illustrative professional replacement-cost rate, not an actual payment |
| Vũ Quốc Huy | 500000 | ECG data and signal processing lead; illustrative professional replacement-cost rate, not an actual payment |
| Trần Tuấn Anh | 500000 | HR forecasting lead; illustrative professional replacement-cost rate, not an actual payment |
| Mai Tuấn Mạnh | 550000 | ML and CNN classification lead; illustrative professional replacement-cost rate, not an actual payment |
| Nguyễn Quang Huy | 550000 | ST-MEM lead; illustrative professional replacement-cost rate, not an actual payment |
| Hoàng Thị Ngọc Hân | 450000 | Static web demo and UX lead; illustrative professional replacement-cost rate, not an actual payment |
| GPU compute provision (estimate) |  | Illustrative planned direct cost; not an invoice or actual expenditure |
| Storage and demo infrastructure (estimate) |  | Illustrative planned direct cost; not an invoice or actual expenditure |

## Schedule

| ID | WBS | Task | Duration | Start | Finish | Predecessors | Resources | Work | Cost |
| --- | --- | --- | --- | --- | --- | --- | --- | --- | --- |
| 1 | 1 | **Phase 1: Initiation and integrated planning** | 5d | 2026-10-01 | 2026-10-07 |  |  | 24h | 13,400,000 |
| 2 | 1.1 | Project charter, scope and acceptance criteria | 2d | 2026-10-01 | 2026-10-02 |  | Nguyễn Tuấn Anh [37.5%]; Vũ Quốc Huy [12.5%] | 8h | 4,600,000 |
| 3 | 1.2 | Integrated WBS, schedule and resource plan | 2d | 2026-10-05 | 2026-10-06 | 2 | Nguyễn Tuấn Anh [37.5%]; Trần Tuấn Anh [12.5%]; Hoàng Thị Ngọc Hân [12.5%] | 10h | 5,500,000 |
| 4 | 1.3 | Quality, risk and communication baseline with plan review | 1d | 2026-10-07 | 2026-10-07 | 3 | Nguyễn Tuấn Anh [50%]; Hoàng Thị Ngọc Hân [25%] | 6h | 3,300,000 |
| 5 | 2 | **Phase 2: ECG data foundation** | 10d | 2026-10-08 | 2026-10-21 |  |  | 48h | 25,350,000 |
| 6 | 2.1 | MIT-BIH inventory and ECG exploration baseline | 4d | 2026-10-08 | 2026-10-13 | 4 | Vũ Quốc Huy [37.5%]; Nguyễn Quang Huy [9.38%]; Trần Tuấn Anh [9.38%] | 18h | 9,150,000 |
| 7 | 2.2 | Preprocessed ECG and HR/RR dataset with data review | 6d | 2026-10-14 | 2026-10-21 | 6 | Vũ Quốc Huy [33.33%]; Trần Tuấn Anh [12.5%]; Mai Tuấn Mạnh [8.33%]; Nguyễn Quang Huy [8.33%]; Storage and demo infrastructure (estimate) | 30h | 16,200,000 |
| 8 | 3 | **Phase 3: Analysis and model evidence** | 10d | 2026-10-22 | 2026-11-04 |  |  | 110h | 65,400,000 |
| 9 | 3.1 | ARIMA/SARIMA forecasting results | 8d | 2026-10-22 | 2026-11-02 | 7 | Trần Tuấn Anh [40.62%]; Vũ Quốc Huy [6.25%] | 30h | 15,000,000 |
| 10 | 3.2 | ML/CNN classification results | 9d | 2026-10-22 | 2026-11-03 | 7 | Mai Tuấn Mạnh [44.44%]; Vũ Quốc Huy [5.56%]; Hoàng Thị Ngọc Hân [5.56%]; GPU compute provision (estimate) | 40h | 23,800,000 |
| 11 | 3.3 | ST-MEM evaluation and combined model review | 10d | 2026-10-22 | 2026-11-04 | 7 | Nguyễn Quang Huy [43.75%]; Mai Tuấn Mạnh [3.75%]; Hoàng Thị Ngọc Hân [2.5%]; GPU compute provision (estimate) | 40h | 26,600,000 |
| 12 | 4 | **Phase 4: Static web demo** | 10d | 2026-11-05 | 2026-11-18 |  |  | 56h | 28,700,000 |
| 13 | 4.1 | Static analysis pages and prepared demo data | 6d | 2026-11-05 | 2026-11-12 | 9, 10, 11 | Hoàng Thị Ngọc Hân [45.83%]; Nguyễn Tuấn Anh [8.33%]; Trần Tuấn Anh [4.17%]; Mai Tuấn Mạnh [4.17%]; Nguyễn Quang Huy [4.17%]; Storage and demo infrastructure (estimate) | 32h | 16,700,000 |
| 14 | 4.2 | ECG replay monitor, integration and demo review | 4d | 2026-11-13 | 2026-11-18 | 13 | Hoàng Thị Ngọc Hân [37.5%]; Vũ Quốc Huy [12.5%]; Nguyễn Tuấn Anh [12.5%]; Mai Tuấn Mạnh [6.25%]; Nguyễn Quang Huy [6.25%] | 24h | 12,000,000 |
| 15 | 5 | **Phase 5: Verification and final report** | 10d | 2026-11-19 | 2026-12-02 |  |  | 38h | 21,200,000 |
| 16 | 5.1 | Verification evidence and issue resolution | 6d | 2026-11-19 | 2026-11-26 | 14 | Nguyễn Tuấn Anh [16.67%]; Vũ Quốc Huy [8.33%]; Trần Tuấn Anh [8.33%]; Mai Tuấn Mạnh [8.33%]; Nguyễn Quang Huy [4.17%]; Hoàng Thị Ngọc Hân [4.17%] | 24h | 13,000,000 |
| 17 | 5.2 | Final project report, user guide and quality review | 4d | 2026-11-27 | 2026-12-02 | 16 | Nguyễn Tuấn Anh [37.5%]; Trần Tuấn Anh [6.25%] | 14h | 8,200,000 |
| 18 | 6 | **Phase 6: Acceptance and handover** | 5d | 2026-12-03 | 2026-12-09 |  |  | 12h | 6,750,000 |
| 19 | 6.1 | User acceptance and final corrections | 3d | 2026-12-03 | 2026-12-07 | 17 | Nguyễn Tuấn Anh [8.33%]; Vũ Quốc Huy [8.33%]; Trần Tuấn Anh [4.17%]; Mai Tuấn Mạnh [4.17%]; Hoàng Thị Ngọc Hân [8.33%] | 8h | 4,150,000 |
| 20 | 6.2 | Handover package, retrospective and final acceptance | 2d | 2026-12-08 | 2026-12-09 | 19 | Nguyễn Tuấn Anh [12.5%]; Trần Tuấn Anh [12.5%]; Storage and demo infrastructure (estimate) | 4h | 2,600,000 |

Notes:
- 2: Charter names the ECG research/demo objective, users, exclusions, deliverables, acceptance criteria and risks; team reviews it.
- 3: Every work package has one owner, estimated work, duration, dependency and completion evidence; six-person load is checked.
- 4: Quality checks, key data/model/demo risks and the weekly update channel are recorded; the baseline version is ready for team review. Phase 1 closes when the six-member team reviews the charter and baseline.
- 6: Record list, lead/sampling details, annotations, basic signal/label plots and source provenance are reproducible.
- 7: Filtering, R-peak handling, HR/RR derivation, windowing, record-level split and checks against overlapping-window leakage are documented. Phase 2 closes when the data lead records the data-readiness check.
- 9: Forecast configuration, held-out period, MAE/RMSE and reproducible plots are recorded with the exact model orders used.
- 10: Feature-based ML and 1D CNN results include record-level split, confusion matrix, F1/AUC and each method's window-label rule; comparisons state limits.
- 11: Checkpoint provenance, fine-tuning setup, test metrics and difference from the earlier report are explicit; demo uses saved results only. Phase 3 closes after the ARIMA/SARIMA, ML/CNN and ST-MEM leads review all three result sets together.
- 13: Overview, ECG exploration, preprocessing, forecast and classification pages load prepared data and show source/limitations for metrics.
- 14: Recorded ECG replay, HR/RR trends and completed-window ST-MEM scores work offline; no live diagnosis or upload is implied. Phase 4 closes after the integrated demo is reviewed against the scope and limitations.
- 16: Data, model, web and replay checks are logged; major issues are fixed or listed with owner and impact; metrics match their source files.
- 17: Report explains scope, method, WBS, schedule, roles, risks, evidence and limitations; guide shows how to open and reproduce the demo. Phase 5 closes after the report and QA evidence are checked together.
- 19: Acceptance checklist is run on the delivered demo/report; defects are corrected or explicitly accepted with limitations.
- 20: Source, generated data, report, setup/usage instructions and decision log are handed over; team records lessons learned. Phase 6 closes when final acceptance and handover are recorded.
